# 高中生填报志愿助手人力资源确定

How a schedule from MS Project changed from version to version. A marks actual dates.

## Version 1 (saved 2019-06-16)

| ID | WBS | Task | Duration | Start | Finish | Predecessors | Total float | Constraint |
| --- | --- | --- | --- | --- | --- | --- | --- | --- |
| 1 | 1 | **启动** | 5d | 2019-03-13 | 2019-03-19 |  | 0d | as late as possible |
| 2 |  | 任命项目经理 | 1d | 2019-03-13 | 2019-03-13 |  | 0d |  |
| 3 |  | 组建核心团队 | 1d | 2019-03-14 | 2019-03-14 | 2 | 0d |  |
| 4 |  | 干系人分析 | 1d | 2019-03-15 | 2019-03-15 | 3 | 0d |  |
| 5 |  | 确定项目发起人 | 1d | 2019-03-18 | 2019-03-18 | 4 | 0d |  |
| 6 |  | 制订章程 | 1d | 2019-03-18 | 2019-03-18 | 5FF | 0d |  |
| 7 |  | 项目启动大会 | 1d | 2019-03-19 | 2019-03-19 | 6 | 0d |  |
| 8 | 2 | **规划** | 22d | 2019-03-20 | 2019-04-18 |  | 0d | as late as possible |
| 9 | 2.1 | **规划范围** | 3d | 2019-03-20 | 2019-03-22 |  | 0d | as late as possible |
| 10 |  | 制定需求说明书 | 1d | 2019-03-20 | 2019-03-20 | 7 | 0d |  |
| 11 |  | 页面设计 | 1d | 2019-03-20 | 2019-03-20 | 10FF | 32d |  |
| 12 |  | 范围说明书 | 1d | 2019-03-21 | 2019-03-21 | 10 | 0d |  |
| 13 |  | 创建WBS | 1d | 2019-03-22 | 2019-03-22 | 12 | 0d |  |
| 14 | 2.2 | **规划时间** | 5d | 2019-03-25 | 2019-03-29 |  | 0d | as late as possible |
| 15 |  | 排列工作包顺序 | 1d | 2019-03-25 | 2019-03-25 | 13 | 0d |  |
| 16 |  | 估算资源 | 1d | 2019-03-26 | 2019-03-26 | 15 | 0d |  |
| 17 |  | 估算持续时间 | 1d | 2019-03-27 | 2019-03-27 | 16 | 0d |  |
| 18 |  | 制定进度计划 | 2d | 2019-03-28 | 2019-03-29 | 17 | 0d |  |
| 19 | 2.3 | **规划成本** | 3d | 2019-04-01 | 2019-04-03 |  | 0d | as late as possible |
| 20 |  | 项目成本估算 | 1d | 2019-04-01 | 2019-04-01 | 18 | 0d | finish no later than 2019-04-04 |
| 21 |  | 项目预算 | 2d | 2019-04-02 | 2019-04-03 | 20 | 0d |  |
| 22 | 2.4 | **规划质量** | 3d | 2019-04-04 | 2019-04-08 |  | 0d | as late as possible |
| 23 |  | 制定测试计划 | 2d | 2019-04-04 | 2019-04-05 | 21 | 0d |  |
| 24 |  | 设计测试用例 | 1d | 2019-04-08 | 2019-04-08 | 23 | 0d |  |
| 25 | 2.5 | **规划人力资源** | 8d | 2019-04-09 | 2019-04-18 |  | 0d | as late as possible |
| 26 |  | 制定人力资源计划 | 2d | 2019-04-09 | 2019-04-10 | 24 | 0d |  |
| 27 |  | 制定人力资源管理计划 | 2d | 2019-04-11 | 2019-04-12 | 26 | 0d |  |
| 28 | 2.5.3 | **规划风险** | 3d | 2019-04-15 | 2019-04-17 |  | 0d | as late as possible |
| 29 |  | 预估风险 | 1d | 2019-04-15 | 2019-04-15 | 27 | 0d |  |
| 30 |  | 制定风险应对策略 | 1d | 2019-04-16 | 2019-04-16 | 29 | 0d |  |
| 31 |  | 制定风险登记册 | 1d | 2019-04-17 | 2019-04-17 | 30 | 0d |  |
| 32 |  | 规划整合 | 1d | 2019-04-18 | 2019-04-18 | 31 | 0d |  |
| 33 | 3 | **执行与监控** | 10d | 2019-04-19 | 2019-05-02 |  | 0d | as late as possible |
| 34 |  | 组建项目团队 | 1d | 2019-04-19 | 2019-04-19 | 32 | 0d |  |
| 35 | 3.2 | **项目执行** | 3d | 2019-04-22 | 2019-04-24 |  | 0d | as late as possible |
| 36 | 3.2.1 | **用户模块** | 2d | 2019-04-22 | 2019-04-23 |  | 0d | as late as possible |
| 37 |  | 登录注册 | 1d | 2019-04-22 | 2019-04-22 | 34 | 8d |  |
| 38 |  | 首页 | 1d | 2019-04-23 | 2019-04-23 | 37 | 8d |  |
| 39 |  | 资讯 | 1d | 2019-04-23 | 2019-04-23 | 38SS | 8d |  |
| 40 |  | 我的 | 1d | 2019-04-23 | 2019-04-23 | 39SS | 8d |  |
| 41 | 3.2.2 | **商家模块** | 3d | 2019-04-22 | 2019-04-24 |  | 0d | as late as possible |
| 42 |  | 注册入驻 | 1d | 2019-04-22 | 2019-04-22 | 34 | 7d |  |
| 43 |  | 商品管理 | 1d | 2019-04-23 | 2019-04-23 | 42 | 7d |  |
| 44 |  | 订单处理 | 1d | 2019-04-24 | 2019-04-24 | 43 | 7d |  |
| 45 | 3.2.3 | **管理员模块** | 3d | 2019-04-22 | 2019-04-24 |  | 0d | as late as possible |
| 46 |  | 商家审核 | 1d | 2019-04-22 | 2019-04-22 | 34 | 0d |  |
| 47 |  | 统计分析 | 1d | 2019-04-23 | 2019-04-23 | 46 | 0d |  |
| 48 |  | 备份 | 1d | 2019-04-24 | 2019-04-24 | 47 | 0d |  |
| 49 | 3.3 | **项目监控** | 3d | 2019-04-27 | 2019-04-30 |  |  | as late as possible |
| 50 |  | 各项指标监控 | 1d | 2019-04-25 | 2019-04-25 | 48 | -2d |  |
| 51 |  | 监控评审 | 1d | 2019-04-26 | 2019-04-26 | 50 | -2d |  |
| 52 |  | 变更评审 | 1d | 2019-04-29 | 2019-04-29 | 51 |  |  |
| 53 |  | 例会 | 1d | 2019-04-30 | 2019-04-30 | 52 |  |  |
| 54 | 3.4 | **管理干系人** | 3d | 2019-04-30 | 2019-05-02 |  |  | as late as possible |
| 55 |  | 发布项目信息 | 1d | 2019-04-30 | 2019-04-30 | 53 |  |  |
| 56 |  | 报告监控指标 | 1d | 2019-05-01 | 2019-05-01 | 55 |  |  |
| 57 |  | 干系人沟通 | 1d | 2019-05-02 | 2019-05-02 | 56 |  |  |
| 58 | 3.5 | **团队建设** | 2d | 2019-04-22 | 2019-04-23 |  |  | as late as possible |
| 59 |  | 培训 | 1d | 2019-04-22 | 2019-04-22 | 34 | 0d | start no later than 2019-04-22 |
| 60 |  | 娱乐 | 1d | 2019-04-23 | 2019-04-23 | 34 | 1d | start no later than 2019-04-23 |
| 61 |  | 沟通 | 1d | 2019-04-23 | 2019-04-23 | 34 | 1d | finish no later than 2019-04-23 |
| 62 | 4 | **收尾** | 2d | 2019-05-03 | 2019-05-04 |  |  | as late as possible |
| 63 |  | 项目最终验收 | 1d | 2019-05-03 | 2019-05-03 | 57 |  |  |
| 64 |  | 项目内部收尾 | 1d | 2019-05-04 | 2019-05-04 | 58 |  |  |

## Version 2 (saved 2019-06-18)

Note of the change: Update 3.6高中生填报志愿助手直接成本估算.mpp

Last finish 2019-05-04 → 2019-05-06 (+2d).

Changed:

| ID | Task | Start | Finish | Duration | Total float | Other |
| --- | --- | --- | --- | --- | --- | --- |
| 1 | **启动** | 2019-03-13 → 2019-03-12 (-1d) |  | 5d → 6d |  |  |
| 2 | 任命项目经理 | 2019-03-13 → 2019-03-12 (-1d) | 2019-03-13 → 2019-03-12 (-1d) |  |  |  |
| 3 | 组建核心团队 | 2019-03-14 → 2019-03-13 (-1d) | 2019-03-14 → 2019-03-13 (-1d) |  |  |  |
| 4 | 干系人分析 | 2019-03-15 → 2019-03-14 (-1d) | 2019-03-15 → 2019-03-14 (-1d) |  |  |  |
| 5 | 确定项目发起人 | 2019-03-18 → 2019-03-15 (-3d) |  | 1d → 2d |  | resources 项目经理 → 项目经理 [50%] |
| 6 | 制订章程 | 2019-03-18 → 2019-03-15 (-3d) |  | 1d → 2d |  | resources 项目经理 → 项目经理 [50%] |
| 62 | **收尾** |  | 2019-05-04 → 2019-05-06 (+2d) |  |  |  |
| 63 | 项目最终验收 |  |  |  | none → 1d | resources 项目经理; UI/UE设计师; 测试主管 → UI/UE设计师; 测试主管 |
| 64 | 项目内部收尾 |  | 2019-05-04 → 2019-05-06 (+2d) |  | none → 9d | constraint none → start no later than 2019-05-04; resources 产品经理 → 项目经理 |
